Schedule from MS Project, 2020-11-09 to 2020-12-06, costs in ¥, A marks actual dates.
HP

## Calendars

- 标准: Mon-Fri 08:00-12:00, 13:00-17:00; Sat-Sun off.

## Resources

| Resource | Rate |
| --- | --- |
| 杜佳玉 | 35 |
| 郭梦瑶 | 35 |
| 焦嘉琦 | 35 |
| 孙宇菲 | 35 |
| 于霄臻 | 35 |
| 刘璐 | 35 |
| 周娜 | 35 |
| 间接成本 |  |
| 储备 |  |

## Schedule

| ID | WBS | Task | Type | Duration | Start | Finish | Complete | Remaining | Actual start | Actual finish | Resources | Work | Actual work | Cost | Actual cost |
| --- | --- | --- | --- | --- | --- | --- | --- | --- | --- | --- | --- | --- | --- | --- | --- |
| 1 | 1 | 完善Selenium框架 | manual | 1d | 2020-11-10 | 2020-11-10 |  |  |  |  | 杜佳玉; 储备 [0.1%] | 8h |  | 380 |  |
| 2 | 2 | **美化测试报告** |  | 9d | 2020-11-11 A | 2020-11-21 | 99% | 0d |  |  | 储备 [0.1%] | 248h | 248h | 9,380 | 8,680 |
| 3 | 2.1 | **Freemarker** |  | 4d | 2020-11-11 A | 2020-11-15 | 99% | 0d |  |  | 间接成本 [0.1%] | 128h | 128h | 4,580 | 4,480 |
| 4 | 2.1.1 | Freemarker+TestNG结合 | manual | 2d | 2020-11-11 A | 2020-11-12 A | 100% |  |  |  | 杜佳玉; 郭梦瑶; 焦嘉琦; 孙宇菲 | 64h | 64h | 2,240 | 2,240 |
| 5 | 2.1.2 | Freemarker+Selenium+TestNG | manual | 2d | 2020-11-13 A | 2020-11-14 A | 100% |  |  |  | 焦嘉琦; 孙宇菲; 杜佳玉; 郭梦瑶 | 32h | 32h | 1,120 | 1,120 |
| 6 | 2.1.3 | Freemarker成功发送邮件 | manual | 1d | 2020-11-15 A | 2020-11-15 A | 100% |  |  |  | 杜佳玉; 郭梦瑶; 孙宇菲; 焦嘉琦 | 32h | 32h | 1,120 | 1,120 |
| 7 | 2.2 | **ReportNG** |  | 2d | 2020-11-13 A | 2020-11-15 | 99% | 0d |  |  | 间接成本 [0.1%] | 24h | 24h | 890 | 840 |
| 8 | 2.2.1 | ReportNG文件配置 | manual | 1d | 2020-11-13 A | 2020-11-13 A | 100% |  |  |  | 于霄臻 | 8h | 8h | 280 | 280 |
| 9 | 2.2.2 | ReportNG成功发送邮件 | manual | 2d | 2020-11-14 A | 2020-11-15 A | 100% |  |  |  | 于霄臻 | 16h | 16h | 560 | 560 |
| 10 | 2.3 | **testNG-xslt** |  | 4d | 2020-11-11 A | 2020-11-15 | 99% | 0d |  |  | 间接成本 [0.1%] | 80h | 80h | 2,850 | 2,800 |
| 11 | 2.3.1 | testNG-xslt文件配置 | manual | 3d | 2020-11-11 A | 2020-11-13 A | 100% |  |  |  | 刘璐; 周娜 | 48h | 48h | 1,680 | 1,680 |
| 12 | 2.3.2 | testNG测试报告邮件发送 | manual | 2d | 2020-11-13 A | 2020-11-15 A | 100% |  |  |  | 刘璐; 周娜 | 32h | 32h | 1,120 | 1,120 |
| 13 | 2.4 | 三种美化方法整合 | manual | 2d | 2020-11-15 A | 2020-11-16 A | 100% |  |  |  | 杜佳玉 | 16h | 16h | 560 | 560 |
| 14 | 3 | **手工测试** |  | 16d | 2020-11-09 A | 2020-11-28 | 99% | 0d |  |  | 储备 [0.1%] | 728h | 728h | 25,930 | 25,480 |
| 15 | 3.1 | 测试计划 | manual | 1d | 2020-11-09 A | 2020-11-09 A | 100% |  |  |  | 杜佳玉; 郭梦瑶; 刘璐; 孙宇菲; 焦嘉琦; 于霄臻; 周娜 | 56h | 56h | 1,960 | 1,960 |
| 16 | 3.2 | **后台** |  | 7d | 2020-11-11 A | 2020-11-19 | 99% | 0d |  |  | 间接成本 [0.1%] | 176h | 176h | 6,260 | 6,160 |
| 17 | 3.2.1 | **主营** |  | 6d | 2020-11-09 | 2020-11-15 | 100% |  | 2020-11-11 | 2020-11-11 |  | 56h | 56h | 1,960 | 1,960 |
| 18 | 3.2.1.1 | **楼盘房源** |  | 1d | 2020-11-11 A | 2020-11-11 A | 100% |  |  |  |  | 40h | 40h | 1,400 | 1,400 |
| 19 | 3.2.1.1.1 | 出售管理 | manual | 1d | 2020-11-11 A | 2020-11-11 A | 100% |  |  |  | 孙宇菲 | 8h | 8h | 280 | 280 |
| 20 | 3.2.1.1.2 | 出租管理 | manual | 1d | 2020-11-11 A | 2020-11-11 A | 100% |  |  |  | 郭梦瑶 | 8h | 8h | 280 | 280 |
| 21 | 3.2.1.1.3 | 楼盘管理 | manual | 1d | 2020-11-11 A | 2020-11-11 A | 100% |  |  |  | 周娜 | 8h | 8h | 280 | 280 |
| 22 | 3.2.1.1.4 | 户型管理 | manual | 1d | 2020-11-11 A | 2020-11-11 A | 100% |  |  |  | 焦嘉琦 | 8h | 8h | 280 | 280 |
| 23 | 3.2.1.1.5 | 相册 | manual | 1d | 2020-11-11 A | 2020-11-11 A | 100% |  |  |  | 于霄臻 | 8h | 8h | 280 | 280 |
| 24 | 3.2.1.2 | 房产设置 | manual | 1d | 2020-11-11 A | 2020-11-11 A | 100% |  |  |  | 刘璐 | 8h | 8h | 280 | 280 |
| 25 | 3.2.1.3 | 会员管理 | manual | 1d | 2020-11-11 A | 2020-11-11 A | 100% |  |  |  | 杜佳玉 | 8h | 8h | 280 | 280 |

| ID | WBS | Task | Type | Duration | Start | Finish | Complete | Remaining | Resources | Work | Actual work | Cost | Actual cost |
| --- | --- | --- | --- | --- | --- | --- | --- | --- | --- | --- | --- | --- | --- |
| 26 | 3.2.2 | **资讯** |  | 3d | 2020-11-16 A | 2020-11-18 A | 100% |  |  | 16h | 16h | 560 | 560 |
| 27 | 3.2.2.1 | 新闻介绍 | manual | 1d | 2020-11-16 A | 2020-11-16 A | 100% |  | 杜佳玉 | 8h | 8h | 280 | 280 |
| 28 | 3.2.2.2 | 专题新闻 | manual | 1d | 2020-11-18 A | 2020-11-18 A | 100% |  | 杜佳玉 | 8h | 8h | 280 | 280 |
| 29 | 3.2.3 | **互动** |  | 3d | 2020-11-16 A | 2020-11-18 A | 100% |  |  | 16h | 16h | 560 | 560 |
| 30 | 3.2.3.1 | 问答系统 | manual | 1d | 2020-11-16 A | 2020-11-16 A | 100% |  | 郭梦瑶 | 8h | 8h | 280 | 280 |
| 31 | 3.2.3.2 | 其它互动 | manual | 1d | 2020-11-18 A | 2020-11-18 A | 100% |  | 郭梦瑶 | 8h | 8h | 280 | 280 |
| 32 | 3.2.4 | **广告** |  | 3d | 2020-11-16 A | 2020-11-18 A | 100% |  |  | 40h | 40h | 1,400 | 1,400 |
| 33 | 3.2.4.1 | 文字连接 | manual | 1d | 2020-11-16 A | 2020-11-16 A | 100% |  | 周娜 | 8h | 8h | 280 | 280 |
| 34 | 3.2.4.2 | 图片连接 | manual | 1d | 2020-11-18 A | 2020-11-18 A | 100% |  | 周娜 | 8h | 8h | 280 | 280 |
| 35 | 3.2.4.3 | 文本块 | manual | 1d | 2020-11-16 A | 2020-11-16 A | 100% |  | 刘璐 | 8h | 8h | 280 | 280 |
| 36 | 3.2.4.4 | 手动推送 | manual | 1d | 2020-11-18 A | 2020-11-18 A | 100% |  | 刘璐 | 8h | 8h | 280 | 280 |
| 37 | 3.2.4.5 | 网址收藏 | manual | 1d | 2020-11-16 A | 2020-11-16 A | 100% |  | 孙宇菲 | 8h | 8h | 280 | 280 |
| 38 | 3.2.5 | **工具** |  | 3d | 2020-11-16 A | 2020-11-18 A | 100% |  |  | 16h | 16h | 560 | 560 |
| 39 | 3.2.5.1 | 系统工具 | manual | 1d | 2020-11-16 A | 2020-11-16 A | 100% |  | 于霄臻 | 8h | 8h | 280 | 280 |
| 40 | 3.2.5.2 | 我的收藏 | manual | 1d | 2020-11-18 A | 2020-11-18 A | 100% |  | 于霄臻 | 8h | 8h | 280 | 280 |
| 41 | 3.2.6 | **架设** |  | 4d | 2020-11-16 A | 2020-11-19 A | 100% |  |  | 32h | 32h | 1,120 | 1,120 |
| 42 | 3.2.6.1 | 超管架构 | manual | 2d | 2020-11-16 A | 2020-11-17 A | 100% |  | 焦嘉琦 | 16h | 16h | 560 | 560 |
| 43 | 3.2.6.2 | 超管工具 | manual | 2d | 2020-11-18 A | 2020-11-19 A | 100% |  | 焦嘉琦 | 16h | 16h | 560 | 560 |
| 44 | 3.3 | **前台** |  | 3d | 2020-11-19 A | 2020-11-22 | 99% | 0d | 间接成本 [0.1%] | 160h | 160h | 5,650 | 5,600 |
| 45 | 3.3.1 | **楼盘** |  | 3d | 2020-11-19 A | 2020-11-22 A | 100% |  |  | 48h | 48h | 1,680 | 1,680 |
| 46 | 3.3.1.1 | 楼盘检索+楼盘内页 | manual | 3d | 2020-11-19 A | 2020-11-22 A | 100% |  | 杜佳玉 | 24h | 24h | 840 | 840 |
| 47 | 3.3.1.2 | 内页互动 | manual | 3d | 2020-11-19 A | 2020-11-22 A | 100% |  | 郭梦瑶 | 24h | 24h | 840 | 840 |
| 48 | 3.3.2 | **二手房** |  | 3d | 2020-11-19 A | 2020-11-22 A | 100% |  |  | 32h | 32h | 1,120 | 1,120 |
| 49 | 3.3.2.1 | 检索页+出租内页 | manual | 3d | 2020-11-19 A | 2020-11-22 A | 100% |  | 刘璐 | 24h | 24h | 840 | 840 |
| 50 | 3.3.2.2 | 内页互动 | manual | 1d | 2020-11-19 A | 2020-11-19 A | 100% |  | 周娜 | 8h | 8h | 280 | 280 |

| ID | WBS | Task | Type | Duration | Start | Finish | Complete | Remaining | Actual start | Resources | Work | Actual work | Cost | Actual cost |
| --- | --- | --- | --- | --- | --- | --- | --- | --- | --- | --- | --- | --- | --- | --- |
| 51 | 3.3.3 | **出租房** |  | 3d | 2020-11-19 A | 2020-11-22 A | 100% |  |  |  | 48h | 48h | 1,680 | 1,680 |
| 52 | 3.3.3.1 | 检索+出租内页 | manual | 3d | 2020-11-19 A | 2020-11-22 A | 100% |  |  | 焦嘉琦 | 24h | 24h | 840 | 840 |
| 53 | 3.3.3.2 | 内页互动 | manual | 3d | 2020-11-19 A | 2020-11-22 A | 100% |  |  | 于霄臻 | 24h | 24h | 840 | 840 |
| 54 | 3.3.4 | **辅助模块** |  | 3d | 2020-11-19 A | 2020-11-22 A | 100% |  |  |  | 32h | 32h | 1,120 | 1,120 |
| 55 | 3.3.4.1 | 基础模块 | manual | 2d | 2020-11-19 A | 2020-11-20 A | 100% |  |  | 孙宇菲 | 16h | 16h | 560 | 560 |
| 56 | 3.3.4.2 | 广告/友情链接 | manual | 1d | 2020-11-21 A | 2020-11-21 A | 100% |  |  | 孙宇菲 | 8h | 8h | 280 | 280 |
| 57 | 3.3.4.3 | 会员 | manual | 1d | 2020-11-22 A | 2020-11-22 A | 100% |  |  | 孙宇菲 | 8h | 8h | 280 | 280 |
| 58 | 3.4 | 执行测试用例 | manual | 2d | 2020-11-23 A | 2020-11-24 A | 100% |  |  | 杜佳玉; 郭梦瑶; 焦嘉琦; 刘璐; 孙宇菲; 于霄臻; 周娜 | 112h | 112h | 3,920 | 3,920 |
| 59 | 3.5 | 测试报告 | manual | 4d | 2020-11-25 A | 2020-11-28 A | 100% |  |  | 杜佳玉; 郭梦瑶; 焦嘉琦; 刘璐; 孙宇菲; 于霄臻; 周娜 | 224h | 224h | 7,840 | 7,840 |
| 60 | 4 | **自动化测试** |  | 16d | 2020-11-16 A | 2020-12-06 | 99% | 0d |  | 储备 [0.1%] | 696h | 696h | 24,960 | 24,360 |
| 61 | 4.1 | **后台** |  | 11d | 2020-11-16 A | 2020-11-30 | 99% | 0d |  | 间接成本 [0.1%] | 528h | 528h | 18,580 | 18,480 |
| 62 | 4.1.1 | **主营** |  | 11d | 2020-11-09 | 2020-11-22 A | 100% |  | 2020-11-16 |  | 200h | 200h | 7,000 | 7,000 |
| 63 | 4.1.1.1 | **楼盘房源** |  | 3d | 2020-11-16 A | 2020-11-18 A | 100% |  |  |  | 120h | 120h | 4,200 | 4,200 |
| 64 | 4.1.1.1.1 | 出售管理 | manual | 3d | 2020-11-16 A | 2020-11-18 A | 100% |  |  | 孙宇菲 | 24h | 24h | 840 | 840 |
| 65 | 4.1.1.1.2 | 出租管理 | manual | 3d | 2020-11-16 A | 2020-11-18 A | 100% |  |  | 郭梦瑶 | 24h | 24h | 840 | 840 |
| 66 | 4.1.1.1.3 | 楼盘管理 | manual | 3d | 2020-11-16 A | 2020-11-18 A | 100% |  |  | 周娜 | 24h | 24h | 840 | 840 |
| 67 | 4.1.1.1.4 | 户型管理 | manual | 3d | 2020-11-16 A | 2020-11-18 A | 100% |  |  | 焦嘉琦 | 24h | 24h | 840 | 840 |
| 68 | 4.1.1.1.5 | 相册 | manual | 3d | 2020-11-16 A | 2020-11-18 A | 100% |  |  | 于霄臻 | 24h | 24h | 840 | 840 |
| 69 | 4.1.1.2 | 房产设置 | manual | 3d | 2020-11-16 A | 2020-11-18 A | 100% |  |  | 刘璐 | 24h | 24h | 840 | 840 |
| 70 | 4.1.1.3 | **会员管理** |  | 6d | 2020-11-16 A | 2020-11-22 A | 100% |  |  |  | 56h | 56h | 1,960 | 1,960 |
| 71 | 4.1.1.3.1 | 经纪人 | manual | 3d | 2020-11-16 A | 2020-11-18 A | 100% |  |  | 杜佳玉 | 24h | 24h | 840 | 840 |
| 72 | 4.1.1.3.2 | 个人会员 | manual | 3d | 2020-11-18 A | 2020-11-20 A | 100% |  |  | 杜佳玉 | 24h | 24h | 840 | 840 |
| 73 | 4.1.1.3.3 | 企业会员 | manual | 1d | 2020-11-22 A | 2020-11-22 A | 100% |  |  | 杜佳玉 | 8h | 8h | 280 | 280 |
| 74 | 4.1.2 | **资讯** |  | 6d | 2020-11-23 A | 2020-11-30 A | 100% |  |  |  | 48h | 48h | 1,680 | 1,680 |
| 75 | 4.1.2.1 | 新闻介绍 | manual | 3d | 2020-11-23 A | 2020-11-25 A | 100% |  |  | 杜佳玉 | 24h | 24h | 840 | 840 |
| 76 | 4.1.2.2 | 专题新闻 | manual | 3d | 2020-11-26 A | 2020-11-30 A | 100% |  |  | 杜佳玉 | 24h | 24h | 840 | 840 |

| ID | WBS | Task | Type | Duration | Start | Finish | Complete | Remaining | Actual start | Actual finish | Resources | Work | Actual work | Cost | Actual cost |
| --- | --- | --- | --- | --- | --- | --- | --- | --- | --- | --- | --- | --- | --- | --- | --- |
| 77 | 4.1.3 | **互动** |  | 6d | 2020-11-19 A | 2020-11-26 A | 100% |  |  |  |  | 56h | 56h | 1,960 | 1,960 |
| 78 | 4.1.3.1 | 问答系统 | manual | 3d | 2020-11-19 A | 2020-11-22 A | 100% |  |  |  | 郭梦瑶 | 24h | 24h | 840 | 840 |
| 79 | 4.1.3.2 | 其它互动 | manual | 4d | 2020-11-23 A | 2020-11-26 A | 100% |  |  |  | 郭梦瑶 | 32h | 32h | 1,120 | 1,120 |
| 80 | 4.1.4 | **广告** |  | 7d | 2020-11-19 | 2020-11-27 | 100% |  | 2020-11-16 | 2020-11-26 |  | 120h | 120h | 4,200 | 4,200 |
| 81 | 4.1.4.1 | 文字连接 | manual | 3d | 2020-11-19 A | 2020-11-22 A | 100% |  |  |  | 周娜 | 24h | 24h | 840 | 840 |
| 82 | 4.1.4.2 | 图片连接 | manual | 4d | 2020-11-23 A | 2020-11-26 A | 100% |  |  |  | 周娜 | 32h | 32h | 1,120 | 1,120 |
| 83 | 4.1.4.3 | 文本块 | manual | 3d | 2020-11-19 A | 2020-11-22 A | 100% |  |  |  | 刘璐 | 24h | 24h | 840 | 840 |
| 84 | 4.1.4.4 | 手动推送 | manual | 4d | 2020-11-23 A | 2020-11-26 A | 100% |  |  |  | 刘璐 | 32h | 32h | 1,120 | 1,120 |
| 85 | 4.1.4.5 | 网址收藏 | manual | 1d | 2020-11-16 A | 2020-11-16 A | 100% |  |  |  | 孙宇菲 | 8h | 8h | 280 | 280 |
| 86 | 4.1.5 | **工具** |  | 5d | 2020-11-19 A | 2020-11-25 A | 100% |  |  |  |  | 48h | 48h | 1,680 | 1,680 |
| 87 | 4.1.5.1 | 系统工具 | manual | 3d | 2020-11-19 A | 2020-11-22 A | 100% |  |  |  | 于霄臻 | 24h | 24h | 840 | 840 |
| 88 | 4.1.5.2 | 我的收藏 | manual | 3d | 2020-11-23 A | 2020-11-25 A | 100% |  |  |  | 于霄臻 | 24h | 24h | 840 | 840 |
| 89 | 4.1.6 | **架设** |  | 8d | 2020-11-19 A | 2020-11-30 A | 100% |  |  |  |  | 56h | 56h | 1,960 | 1,960 |
| 90 | 4.1.6.1 | 超管架构 | manual | 3d | 2020-11-19 A | 2020-11-23 A | 100% |  |  |  | 焦嘉琦 | 24h | 24h | 840 | 840 |
| 91 | 4.1.6.2 | 超管工具 | manual | 4d | 2020-11-25 A | 2020-11-30 A | 100% |  |  |  | 焦嘉琦 | 32h | 32h | 1,120 | 1,120 |
| 92 | 4.2 | **前台** |  | 5d | 2020-11-29 A | 2020-12-03 | 99% | 0d |  |  | 间接成本 [0.1%] | 168h | 168h | 5,980 | 5,880 |
| 93 | 4.2.1 | **楼盘** |  | 2d | 2020-12-01 | 2020-12-02 A | 100% |  | 2020-11-29 |  |  | 32h | 32h | 1,120 | 1,120 |
| 94 | 4.2.1.1 | 楼盘检索+楼盘内页 | manual | 2d | 2020-12-01 A | 2020-12-02 A | 100% |  |  |  | 杜佳玉 | 16h | 16h | 560 | 560 |
| 95 | 4.2.1.2 | 内页互动 | manual | 2d | 2020-11-29 A | 2020-11-30 A | 100% |  |  |  | 郭梦瑶 | 16h | 16h | 560 | 560 |
| 96 | 4.2.2 | **二手房** |  | 4d | 2020-11-29 | 2020-12-02 A | 100% |  | 2020-11-30 |  |  | 48h | 48h | 1,680 | 1,680 |
| 97 | 4.2.2.1 | 检索页+出租内页 | manual | 3d | 2020-11-30 A | 2020-12-02 A | 100% |  |  |  | 刘璐 | 24h | 24h | 840 | 840 |
| 98 | 4.2.2.2 | 内页互动 | manual | 3d | 2020-11-30 A | 2020-12-02 A | 100% |  |  |  | 周娜 | 24h | 24h | 840 | 840 |
| 99 | 4.2.3 | **出租房** |  | 5d | 2020-11-29 | 2020-12-03 A | 100% |  | 2020-11-30 |  |  | 64h | 64h | 2,240 | 2,240 |
| 100 | 4.2.3.1 | 检索+出租内页 | manual | 4d | 2020-11-30 A | 2020-12-03 A | 100% |  |  |  | 焦嘉琦 | 32h | 32h | 1,120 | 1,120 |
| 101 | 4.2.3.2 | 内页互动 | manual | 4d | 2020-11-30 A | 2020-12-03 A | 100% |  |  |  | 于霄臻 | 32h | 32h | 1,120 | 1,120 |

| ID | WBS | Task | Type | Duration | Start | Finish | Complete | Remaining | Resources | Work | Actual work | Cost | Actual cost |
| --- | --- | --- | --- | --- | --- | --- | --- | --- | --- | --- | --- | --- | --- |
| 102 | 4.2.4 | **辅助模块** |  | 4d | 2020-11-30 A | 2020-12-03 A | 100% |  |  | 24h | 24h | 840 | 840 |
| 103 | 4.2.4.1 | 基础模块 | manual | 1d | 2020-11-30 A | 2020-11-30 A | 100% |  | 孙宇菲 | 8h | 8h | 280 | 280 |
| 104 | 4.2.4.2 | 广告/友情链接 | manual | 1d | 2020-12-02 A | 2020-12-02 A | 100% |  | 孙宇菲 | 8h | 8h | 280 | 280 |
| 105 | 4.2.4.3 | 会员 | manual | 1d | 2020-12-03 A | 2020-12-03 A | 100% |  | 孙宇菲 | 8h | 8h | 280 | 280 |
| 106 | 5 | **jenkins持续性集成** |  | 7d | 2020-11-28 A | 2020-12-06 | 40% | 4.2d | 间接成本 [0.1%]; 储备 [0.1%] | 40h | 16h | 1,420 | 560 |
| 107 | 5.1 | jenkins环境搭建 | manual | 2d | 2020-11-28 A | 2020-11-30 A | 100% |  | 焦嘉琦 | 16h | 16h | 560 | 560 |
| 108 | 5.2 | jenkins集成 | manual | 3d | 2020-12-03 | 2020-12-06 |  |  | 杜佳玉 | 24h |  | 840 |  |
